# 质量研究

Schedule from a web Gantt chart, 2024-06-11 to 2026-09-02.
Saturdays and Sundays are off

## Schedule

| ID | WBS | Task | Duration | Start | Finish | Complete | inPeople | Status |
| --- | --- | --- | --- | --- | --- | --- | --- | --- |
| 2 | 1 | 高分子蛋白验证及报告 | 5d | 2024-07-09 | 2024-07-15 | 100% | 刘婧 | done |
| 3 | 2 | 离子交换验证 | 10d | 2024-07-15 | 2024-07-26 |  | 刘婧 |  |
| 4 | 3 | 蛋白质含量测定 | 3d | 2024-07-05 | 2024-07-09 | 80% | 刘婧 |  |
| 5 | 4 | 电泳纯度及分子量 | 5d | 2024-07-10 | 2024-07-16 | 80% | 张友 |  |
| 6 | 5 | 无菌验证及检测 | 10d | 2024-07-17 | 2024-07-30 |  | 张友 | waiting |
| 7 | 6 | 微生物限度验证及检测 | 10d | 2024-08-05 | 2024-08-16 |  | 张友 | waiting |
| 8 | 7 | 细菌内毒素验证及检测 | 3d | 2024-08-19 | 2024-08-21 |  | 张友 | waiting |
| 9 | 8 | 常量 | 5d | 2024-08-12 | 2024-08-16 |  |  | waiting |
| 10 | 9 | 宿主蛋白残留验证 | 10d | 2024-09-02 | 2024-09-13 |  | 罗涛 | waiting |
| 11 | 10 | 宿主DNA残留验证 | 10d | 2024-09-09 | 2024-09-20 |  | 罗涛 | waiting |
| 12 | 11 | 生物学活性方法验证 | 10d | 2024-09-16 | 2024-09-27 |  | 冯雪 | waiting |
| 13 | 12 | 肽图验证及检测 | 5d | 2024-10-21 | 2024-10-25 |  | 张友 | waiting |
| 14 | 13 | 卡那霉素残留验证 | 5d | 2024-10-14 | 2024-10-18 |  | 罗涛 | waiting |
| 15 | 14 | IPTG残留验证 | 5d | 2024-11-04 | 2024-11-08 |  |  | waiting |
| 16 | 15 | 质量控制资料 | 40d | 2024-07-05 | 2024-08-29 | 5% | 薛春佳 |  |
| 17 | 16 | 反复冻融 | 10d | 2024-08-19 | 2024-08-30 |  |  | waiting |
| 18 | 17 | 影响因素 | 10d | 2024-08-19 | 2024-08-30 |  |  | waiting |
| 19 | 18 | 加速和长期1月 | 5d | 2024-09-19 | 2024-09-25 |  |  | waiting |
| 20 | 19 | 加速和长期2月 | 5d | 2024-10-21 | 2024-10-25 |  |  | waiting |
| 21 | 20 | 加速和长期3月 | 5d | 2024-11-21 | 2024-11-27 |  |  | waiting |
| 22 | 21 | 加速和长期6月 | 10d | 2025-02-20 | 2025-03-05 |  |  | waiting |
| 23 | 22 | 长期9月 | 5d | 2025-05-21 | 2025-05-27 |  |  | waiting |
| 24 | 23 | 长期12月 | 10d | 2025-08-21 | 2025-09-03 |  |  | waiting |
| 25 | 24 | 长期18月 | 10d | 2025-11-20 | 2025-12-03 |  |  | waiting |
| 26 | 25 | 长期24月 | 10d | 2026-08-20 | 2026-09-02 |  |  | waiting |
| 27 | 26 | 稳定性考察资料 | 10d | 2024-07-26 | 2024-08-08 |  |  | waiting |
| 28 | 27 | 特性鉴定及资料 | 10d | 2024-09-02 | 2024-09-13 |  |  | waiting |
| 29 | 28 | DCP2301高分子蛋白验证 | 15d | 2024-07-05 | 2024-07-25 | 80% | 薛春佳 |  |
| 30 | 29 | DCP2301含量（反相）验证 | 5d | 2024-07-22 | 2024-07-26 | 80% | 张友 |  |
| 31 | 30 | DCP2301离子交换验证 | 5d | 2024-07-19 | 2024-07-25 | 80% | 刘婧 |  |
| 32 | 31 | DCP2301蛋白质含量 | 1d | 2024-07-22 | 2024-07-22 | 100% | 刘婧 | waiting |
| 33 | 32 | DCP2301电泳纯度及分子量 | 3d | 2024-07-15 | 2024-07-17 | 80% | 张友 |  |
| 34 | 33 | DCP2301常量 | 1d | 2024-07-05 | 2024-07-05 |  |  | waiting |
| 35 | 34 | DCP2301质量控制资料（附件） | 1d | 2024-07-05 | 2024-07-05 | 10% |  |  |
| 36 | 35 | DCP2301反复冻融 | 4d | 2024-08-05 | 2024-08-08 | 20% |  | waiting |
| 37 | 36 | DCP2301影响因素 | 3d | 2024-08-05 | 2024-08-07 | 40% |  | waiting |
| 38 | 37 | DCP2301长期1月 | 2d | 2024-09-05 | 2024-09-06 |  |  | waiting |
| 39 | 38 | DCP2301长期2月 | 2d | 2024-10-08 | 2024-10-09 |  |  | waiting |
| 40 | 39 | DCP2301长期3月 | 2d | 2024-11-05 | 2024-11-06 |  |  | waiting |
| 41 | 40 | DCP2301长期6月 | 2d | 2025-07-07 | 2025-07-08 |  |  | waiting |
| 42 | 41 | DCP2301长期9月 | 2d | 2024-07-05 | 2024-07-08 |  |  | waiting |
| 43 | 42 | DCP2301长期12月 | 2d | 2024-07-05 | 2024-07-08 |  |  | waiting |
| 44 | 43 | DCP2301长期18月 | 2d | 2024-07-05 | 2024-07-08 |  |  | waiting |
| 45 | 44 | DCP2301长期24月 | 2d | 2024-07-05 | 2024-07-08 |  |  | waiting |
| 46 | 45 | KCM05质量控制资料（附件） | 5d | 2024-07-05 | 2024-07-11 | 20% | 薛春佳 |  |
| 47 | 46 | KCM05长期1月 | 1d | 2024-06-11 | 2024-06-11 | 100% | 张友 | done |
| 48 | 47 | KCM05长期2月 | 1d | 2024-07-11 | 2024-07-11 | 100% | 张友 | done |
| 49 | 48 | KCM05长期3月 | 1d | 2024-08-12 | 2024-08-12 | 100% | 张友 | done |
| 50 | 49 | KCM05长期6月 | 1d | 2024-11-11 | 2024-11-11 |  | 张友 | waiting |
| 51 | 50 | KCM05长期9月 | 1d | 2025-02-11 | 2025-02-11 |  | 张友 | waiting |
| 52 | 51 | KCM05长期12月 | 1d | 2025-05-12 | 2025-05-12 |  | 张友 | waiting |
| 53 | 52 | KCM05长期18月 | 1d | 2025-11-11 | 2025-11-11 |  | 张友 | waiting |
| 54 | 53 | KCM05长期24月 | 1d | 2026-05-11 | 2026-05-11 |  | 张友 | waiting |

Notes:
- 4: 缺240408批
